# лр1

Schedule from MS Project, 2021-03-01 to 2021-07-30, status date 2021-04-09, costs in ₽, A marks actual dates.
Продолжительность - 6 месяцев / Количество работников - 16 человек / Бюджет - 50 000 рублей

## Calendars

- Стандартный: Mon-Fri 09:00-13:00, 14:00-18:00; Sat-Sun off. Exceptions (off unless hours are given): 2021-03-08 (Международный женский день), 2021-05-03 (Праздник весны и труда), 2021-05-10 (День победы), 2021-06-14 (День России).

## Resources

| Resource | Group | Rate | Cost per use |
| --- | --- | --- | --- |
| Ведущий программист | Программирование | 10 | 100 |
| Программист №1 | Программирование | 7 | 50 |
| Программист №2 | Программирование | 7 | 50 |
| Программист №3 | Программирование | 7 | 50 |
| Программист №4 | Программирование | 7 | 50 |
| Системный аналитик | Анализ | 20 | 300 |
| Художник-дизайнер | Дизайн | 8 | 70 |
| Технический писатель | Документация | 5 | 20 |
| Web-дизайнер | Internet | 7 | 50 |
| 3D-аниматор | Дизайн | 8 | 70 |
| Мультимедиа-корреспондент | M-медиа | 3 | 20 |
| Наборщик данных №1 | Ввод данных | 2 | 10 |
| Наборщик данных №2 | Ввод данных | 2 | 10 |
| Наборщик данных №3 | Ввод данных | 2 | 10 |
| Наборщик данных №4 | Ввод данных | 2 | 10 |
| Наборщик данных №5 | Ввод данных | 2 | 10 |
| Сервер | Сервер | 2 |  |
| Бумага |  | 20 |  |
| 3D-аниматор, стажер | Дизайн | 4 | 35 |
| Программист №5 | Программирование | 7 | 50 |

## Schedule

| ID | WBS | Task | Type | Duration | Start | Finish | Predecessors | Complete | Remaining | Baseline start | Baseline finish | Baseline duration | Total slack | Free slack | Resources | Work | Actual work | Cost | Baseline cost | Actual cost |
| --- | --- | --- | --- | --- | --- | --- | --- | --- | --- | --- | --- | --- | --- | --- | --- | --- | --- | --- | --- | --- |
| 1 | 1 | Начало проекта | milestone | 0w | 2021-03-01 09:00 A | 2021-03-01 09:00 A |  | 100% |  | 2021-03-01 09:00 | 2021-03-01 09:00 | 0w |  |  |  |  |  |  |  |  |
| 2 | 2 | **Создание интерфейса** |  | 84.18d | 2021-03-01 09:00 A | 2021-07-01 10:25 | 1 | 79% | 17.49d | 2021-03-01 09:00 | 2021-06-24 16:03 | 79.76d | 0.04d |  |  | 559.99h | 319.99h | 5,311.34 | 5,650 | 3,221.34 |
| 3 | 2.1 | **Разработка дизайна интерфейса** |  | 24.07d | 2021-03-01 09:00 A | 2021-04-05 09:33 A |  | 100% |  | 2021-03-01 09:00 | 2021-04-06 15:00 | 25.62d |  |  |  | 319.99h | 319.99h | 2,431.34 | 2,770 | 2,431.34 |
| 4 | 2.1.1 | Разработка 2D графических элементов |  | 3w | 2021-03-01 09:00 A | 2021-03-23 12:00 A |  | 100% |  | 2021-03-01 09:00 | 2021-03-23 12:00 | 3w |  |  | Художник-дизайнер | 120h | 120h | 1,030 | 1,030 | 1,030 |
| 5 | 2.1.2 | Разработка 3D графических элементов |  | 1w | 2021-03-01 09:00 A | 2021-03-09 10:00 A | 4SS | 100% |  | 2021-03-01 09:00 | 2021-03-16 11:00 | 2w |  |  | 3D-аниматор; 3D-аниматор, стажер | 80h | 80h | 585 | 710 | 585 |
| 6 | 2.1.3 | Создание заставки |  | 1.72w | 2021-03-09 10:00 A | 2021-04-05 09:33 A | 5 | 100% |  | 2021-03-16 11:00 | 2021-04-06 15:00 | 3w |  |  | 3D-аниматор; 3D-аниматор, стажер | 119.99h | 119.99h | 816.34 | 1,030 | 816.34 |
| 7 | 2.2 | Программирование интерфейса |  | 1.5w | 2021-06-21 15:25 | 2021-07-01 10:25 | 3, 12 |  |  | 2021-06-15 11:03 | 2021-06-24 16:03 | 1.5w | 0.04d | 0d | Программист №3; Программист №4; Программист №2; Программист №5 | 240h |  | 1,880 | 1,880 |  |
| 8 | 3 | **Построение базы объектов** |  | 88.71d | 2021-03-24 16:00 A | 2021-07-30 12:40 |  | 9% | 80.34d | 2021-03-23 12:00 | 2021-07-27 14:20 | 87.17d | 0d |  | Сервер | 5788.67h | 349.5h | 16,055.69 | 15,632.67 | 2,179.44 |
| 9 | 3.1 | Анализ и построение структуры базы объектов |  | 3.33w | 2021-03-24 16:00 A | 2021-04-16 16:20 |  | 50% | 1.67w | 2021-03-23 12:00 | 2021-04-15 14:20 | 3.33w | 0d |  | Системный аналитик | 80h | 60h | 1,900 | 1,900 | 1,500 |
| 10 | 3.2 | Программирование средств обработки базы объектов |  | 2.33w | 2021-04-16 16:20 | 2021-05-05 12:40 | 9 |  |  | 2021-04-15 14:20 | 2021-04-29 14:20 | 2w | 0d |  | Программист №3; Программист №4; Программист №2; Программист №5 | 240h |  | 1,880 | 1,830 |  |
| 11 | 3.3 | Наполнение базы объектов |  | 12w | 2021-05-05 12:40 | 2021-07-30 12:40 | 10 |  |  | 2021-04-29 14:20 | 2021-07-27 14:20 | 12w | 0d |  | Наборщик данных №1; Наборщик данных №2; Наборщик данных №3; Наборщик данных №4; Наборщик данных №5 | 2400h |  | 4,850 | 4,850 |  |
| 12 | 4 | **Создание ядра GIS** |  | 76.68d | 2021-03-01 09:00 A | 2021-06-21 15:25 |  | 23% | 59.25d | 2021-03-01 09:00 | 2021-06-15 11:03 | 72.26d | 0.04d | 0d |  | 1900h | 260h | 18,342.75 | 18,057.97 | 4,580 |
| 13 | 4.1 | Анализ и проектирование ядра |  | 3.25w | 2021-03-01 09:00 A | 2021-03-24 16:00 A |  | 100% |  | 2021-03-01 09:00 | 2021-03-23 12:00 | 3w |  |  | Ведущий программист; Системный аналитик | 260h | 260h | 4,300 | 4,000 | 4,300 |
| 14 | 4.2 | Создание модели ядра |  | 2.52w | 2021-03-24 16:00 | 2021-04-12 11:36 | 13 |  |  | 2021-03-23 12:00 | 2021-04-06 12:49 | 2.02w | 4.67d |  | Ведущий программист; Программист №2; Программист №3; Программист №4 | 400h |  | 3,344.48 | 3,336.46 |  |
| 15 | 4.3 | Тестирование модели ядра |  | 1w | 2021-04-19 09:00 A | 2021-04-23 18:00 | 14 |  | 1w | 2021-04-06 12:49 | 2021-04-13 12:49 | 1w | 0.04d | 0d | Программист №2 | 40h |  | 330 | 330 | 50 |
| 16 | 4.4 | Создание рабочей версии ядра |  | 7.54w | 2021-04-26 09:00 | 2021-06-21 15:25 | 15 |  |  | 2021-04-13 12:49 | 2021-06-15 11:03 | 8.36w | 0.04d |  | Ведущий программист; Программист №2; Программист №3; Программист №4; Программист №5 | 1200h |  | 9,368.27 | 9,391.52 |  |
| 17 | 5 | Создание мультимедиа – наполнения |  | 6w | 2021-04-05 09:33 | 2021-05-19 17:33 | 3 |  |  | 2021-04-06 15:00 | 2021-05-21 13:00 | 6w | 50.51d |  | Мультимедиа-корреспондент | 240h |  | 740 | 740 |  |
| 18 | 6 | Создание справочной системы |  | 2w | 2021-07-12 14:25 | 2021-07-26 16:25 | 7 |  |  | 2021-07-06 10:03 | 2021-07-20 12:03 | 2w | 3.65d |  | Технический писатель | 80h |  | 420 | 420 |  |
| 19 | 7 | **Создание руководства пользователя** |  | 17.38d | 2021-06-17 10:25 | 2021-07-12 14:25 | 7FS-10d |  |  | 2021-06-09 16:03 | 2021-07-06 10:03 | 17.38d | 0.04d |  |  | 160h |  | 1,010 | 1,010 |  |
| 20 | 7.1 | Разработка дизайна руководства |  | 1w | 2021-06-17 10:25 | 2021-06-24 11:25 |  |  |  | 2021-06-09 16:03 | 2021-06-17 17:03 | 1w | 0.04d | 0d | Художник-дизайнер | 40h |  | 390 | 390 |  |
| 21 | 7.2 | Написание руководства пользователя |  | 3w | 2021-06-21 10:25 | 2021-07-12 14:25 | 20SS+2d |  |  | 2021-06-11 16:03 | 2021-07-06 10:03 | 3w | 0.04d | 0d | Технический писатель | 120h |  | 620 | 620 |  |
| 22 | 8 | **Создание web-сайта и поддержка** |  | 22.03d | 2021-06-21 10:25 | 2021-07-21 10:42 |  |  |  | 2021-06-11 16:03 | 2021-07-16 12:03 | 23.62d | 0.04d | 0d |  | 248h |  | 2,022.83 | 2,106 |  |
| 23 | 8.1 | Разработка структуры сайта |  | 1d | 2021-06-21 10:25 | 2021-06-22 10:25 | 21SS |  |  | 2021-06-11 16:03 | 2021-06-15 16:03 | 1d | 0.04d | 0d | Web-дизайнер | 8h |  | 106 | 106 |  |
| 24 | 8.2 | Разработка дизайна сайта |  | 1.11w | 2021-06-22 10:25 | 2021-06-29 15:42 | 23 |  |  | 2021-06-15 16:03 | 2021-06-25 09:03 | 1.4w | 0.04d | 0d | 3D-аниматор; Web-дизайнер; Художник-дизайнер; 3D-аниматор, стажер | 120h |  | 1,026.83 | 1,110 |  |
| 25 | 8.3 | Наполнение сайта |  | 3w | 2021-06-29 15:42 | 2021-07-21 10:42 | 24 |  |  | 2021-06-25 09:03 | 2021-07-16 12:03 | 3w | 0.04d |  | Web-дизайнер | 120h |  | 890 | 890 |  |
| 26 | 9 | Тестирование сайта |  | 2.44w | 2021-07-14 10:42 | 2021-07-30 12:18 | 22FS-1w |  |  | 2021-07-09 12:03 | 2021-07-27 14:28 | 2.44w | 0.04d | 0d | Ведущий программист; Программист №2; Программист №3; Программист №4; Программист №5 | 480h |  | 3,943.26 | 3,945.15 |  |
| 27 | 10 | Сдача сайта в эксплуатацию | milestone | 0w | 2021-07-30 12:18 | 2021-07-30 12:18 | 26 |  |  | 2021-07-27 14:28 | 2021-07-27 14:28 | 0w | 0.04d |  |  |  |  |  |  |  |

| ID | WBS | Task | Duration | Start | Finish | Complete | Remaining | Baseline start | Baseline finish | Baseline duration | Total slack | Constraint | Resources | Work | Actual work | Cost | Baseline cost | Actual cost |
| --- | --- | --- | --- | --- | --- | --- | --- | --- | --- | --- | --- | --- | --- | --- | --- | --- | --- | --- |
| 28 | 11 | **Совещание** | 101.12d | 2021-03-03 09:00 A | 2021-07-28 10:00 | 27% | 73.55d | 2021-03-03 09:00 | 2021-07-21 10:00 | 96.12d | 2.33d |  |  | 148.4h | 39.6h | 1,737.2 | 1,220 | 466.8 |
| 29 | 11.1 | Совещание 1 | 1h | 2021-03-03 09:00 A | 2021-03-03 10:00 A | 100% |  | 2021-03-03 09:00 | 2021-03-03 10:00 | 1h |  | start no earlier than 2021-03-03 09:00 | 3D-аниматор; Web-дизайнер; Ведущий программист; Мультимедиа-корреспондент; Системный аналитик; Технический писатель; Художник-дизайнер; Бумага | 7h | 7h | 81 | 61 | 81 |
| 30 | 11.2 | Совещание 2 | 1h | 2021-03-10 09:00 A | 2021-03-10 10:00 A | 100% |  | 2021-03-10 09:00 | 2021-03-10 10:00 | 1h |  | start no earlier than 2021-03-10 09:00 | 3D-аниматор; Web-дизайнер; Ведущий программист; Мультимедиа-корреспондент; Системный аналитик; Технический писатель; Художник-дизайнер; Бумага | 7h | 7h | 81 | 61 | 81 |
| 31 | 11.3 | Совещание 3 | 1h | 2021-03-17 09:00 A | 2021-03-17 10:00 A | 100% |  | 2021-03-17 09:00 | 2021-03-17 10:00 | 1h |  | start no earlier than 2021-03-17 09:00 | 3D-аниматор; Web-дизайнер; Ведущий программист; Мультимедиа-корреспондент; Системный аналитик; Технический писатель; Художник-дизайнер; Бумага | 6h | 6h | 73 | 61 | 73 |
| 32 | 11.4 | Совещание 4 | 1h | 2021-03-24 09:00 A | 2021-03-24 10:00 A | 100% |  | 2021-03-24 09:00 | 2021-03-24 10:00 | 1h |  | start no earlier than 2021-03-24 09:00 | 3D-аниматор; Web-дизайнер; Ведущий программист; Мультимедиа-корреспондент; Системный аналитик; Технический писатель; Художник-дизайнер; Бумага | 6h | 6h | 73 | 61 | 73 |
| 33 | 11.5 | Совещание 5 | 1h | 2021-03-31 09:00 A | 2021-03-31 10:00 A | 100% |  | 2021-03-31 09:00 | 2021-03-31 10:00 | 1h |  | start no earlier than 2021-03-31 09:00 | 3D-аниматор [80%]; Web-дизайнер; Ведущий программист; Мультимедиа-корреспондент; Системный аналитик; Технический писатель; Художник-дизайнер; Бумага | 6.8h | 6.8h | 79.4 | 61 | 79.4 |
| 34 | 11.6 | Совещание 6 | 1h | 2021-04-07 09:00 A | 2021-04-07 10:00 A | 100% |  | 2021-04-07 09:00 | 2021-04-07 10:00 | 1h |  | start no earlier than 2021-04-07 09:00 | 3D-аниматор [80%]; Web-дизайнер; Ведущий программист; Мультимедиа-корреспондент; Системный аналитик; Технический писатель; Художник-дизайнер; Бумага | 6.8h | 6.8h | 79.4 | 61 | 79.4 |
| 35 | 11.7 | Совещание 7 | 1h | 2021-04-14 09:00 | 2021-04-14 10:00 |  |  | 2021-04-14 09:00 | 2021-04-14 10:00 | 1h | 74.33d | start no earlier than 2021-04-14 09:00 | 3D-аниматор [80%]; Web-дизайнер; Ведущий программист; Мультимедиа-корреспондент; Системный аналитик; Технический писатель; Художник-дизайнер; Бумага | 6.8h |  | 79.4 | 61 |  |
| 36 | 11.8 | Совещание 8 | 1h | 2021-04-21 09:00 | 2021-04-21 10:00 |  |  | 2021-04-21 09:00 | 2021-04-21 10:00 | 1h | 69.33d | start no earlier than 2021-04-21 09:00 | 3D-аниматор [80%]; Web-дизайнер; Ведущий программист; Мультимедиа-корреспондент; Системный аналитик; Технический писатель; Художник-дизайнер; Бумага | 6.8h |  | 79.4 | 61 |  |
| 37 | 11.9 | Совещание 9 | 1h | 2021-04-28 09:00 | 2021-04-28 10:00 |  |  | 2021-04-28 09:00 | 2021-04-28 10:00 | 1h | 64.33d | start no earlier than 2021-04-28 09:00 | 3D-аниматор [80%]; Web-дизайнер; Ведущий программист; Мультимедиа-корреспондент; Системный аналитик; Технический писатель; Художник-дизайнер; Бумага | 6.8h |  | 79.4 | 61 |  |
| 38 | 11.10 | Совещание 10 | 1h | 2021-05-05 09:00 | 2021-05-05 10:00 |  |  | 2021-05-05 09:00 | 2021-05-05 10:00 | 1h | 60.33d | start no earlier than 2021-05-05 09:00 | 3D-аниматор [80%]; Web-дизайнер; Ведущий программист; Мультимедиа-корреспондент; Системный аналитик; Технический писатель; Художник-дизайнер; Бумага | 6.8h |  | 79.4 | 61 |  |
| 39 | 11.11 | Совещание 11 | 1h | 2021-05-12 09:00 | 2021-05-12 10:00 |  |  | 2021-05-12 09:00 | 2021-05-12 10:00 | 1h | 56.33d | start no earlier than 2021-05-12 09:00 | 3D-аниматор [80%]; Web-дизайнер; Ведущий программист; Мультимедиа-корреспондент; Системный аналитик; Технический писатель; Художник-дизайнер; Бумага | 6.8h |  | 79.4 | 61 |  |
| 40 | 11.12 | Совещание 12 | 1h | 2021-05-19 09:00 | 2021-05-19 10:00 |  |  | 2021-05-19 09:00 | 2021-05-19 10:00 | 1h | 51.33d | start no earlier than 2021-05-19 09:00 | 3D-аниматор [80%]; Web-дизайнер; Ведущий программист; Мультимедиа-корреспондент; Системный аналитик; Технический писатель; Художник-дизайнер; Бумага | 6.8h |  | 79.4 | 61 |  |
| 41 | 11.13 | Совещание 13 | 1h | 2021-05-26 09:00 | 2021-05-26 10:00 |  |  | 2021-05-26 09:00 | 2021-05-26 10:00 | 1h | 46.33d | start no earlier than 2021-05-26 09:00 | 3D-аниматор [80%]; Web-дизайнер; Ведущий программист; Мультимедиа-корреспондент; Системный аналитик; Технический писатель; Художник-дизайнер; Бумага | 6.8h |  | 79.4 | 61 |  |
| 42 | 11.14 | Совещание 14 | 1h | 2021-06-02 09:00 | 2021-06-02 10:00 |  |  | 2021-06-02 09:00 | 2021-06-02 10:00 | 1h | 41.33d | start no earlier than 2021-06-02 09:00 | 3D-аниматор [80%]; Web-дизайнер; Ведущий программист; Мультимедиа-корреспондент; Системный аналитик; Технический писатель; Художник-дизайнер; Бумага | 6.8h |  | 79.4 | 61 |  |
| 43 | 11.15 | Совещание 15 | 1h | 2021-06-09 09:00 | 2021-06-09 10:00 |  |  | 2021-06-09 09:00 | 2021-06-09 10:00 | 1h | 36.33d | start no earlier than 2021-06-09 09:00 | 3D-аниматор [80%]; Web-дизайнер; Ведущий программист; Мультимедиа-корреспондент; Системный аналитик; Технический писатель; Художник-дизайнер; Бумага | 6.8h |  | 79.4 | 61 |  |
| 44 | 11.16 | Совещание 16 | 1h | 2021-06-16 09:00 | 2021-06-16 10:00 |  |  | 2021-06-16 09:00 | 2021-06-16 10:00 | 1h | 32.33d | start no earlier than 2021-06-16 09:00 | 3D-аниматор [80%]; Web-дизайнер; Ведущий программист; Мультимедиа-корреспондент; Системный аналитик; Технический писатель; Художник-дизайнер; Бумага | 6.8h |  | 79.4 | 61 |  |
| 45 | 11.17 | Совещание 17 | 1h | 2021-06-23 09:00 | 2021-06-23 10:00 |  |  | 2021-06-23 09:00 | 2021-06-23 10:00 | 1h | 27.33d | start no earlier than 2021-06-23 09:00 | 3D-аниматор [80%]; Web-дизайнер; Ведущий программист; Мультимедиа-корреспондент; Системный аналитик; Технический писатель; Художник-дизайнер; Бумага | 6.8h |  | 79.4 | 61 |  |
| 46 | 11.18 | Совещание 18 | 1h | 2021-06-30 09:00 | 2021-06-30 10:00 |  |  | 2021-06-30 09:00 | 2021-06-30 10:00 | 1h | 22.33d | start no earlier than 2021-06-30 09:00 | 3D-аниматор [80%]; Web-дизайнер; Ведущий программист; Мультимедиа-корреспондент; Системный аналитик; Технический писатель; Художник-дизайнер; Бумага | 6.8h |  | 79.4 | 61 |  |
| 47 | 11.19 | Совещание 19 | 1h | 2021-07-07 09:00 | 2021-07-07 10:00 |  |  | 2021-07-07 09:00 | 2021-07-07 10:00 | 1h | 17.33d | start no earlier than 2021-07-07 09:00 | 3D-аниматор [80%]; Web-дизайнер; Ведущий программист; Мультимедиа-корреспондент; Системный аналитик; Технический писатель; Художник-дизайнер; Бумага | 6.8h |  | 79.4 | 61 |  |
| 48 | 11.20 | Совещание 20 | 1h | 2021-07-14 09:00 | 2021-07-14 10:00 |  |  | 2021-07-14 09:00 | 2021-07-14 10:00 | 1h | 12.33d | start no earlier than 2021-07-14 09:00 | 3D-аниматор [80%]; Web-дизайнер; Ведущий программист; Мультимедиа-корреспондент; Системный аналитик; Технический писатель; Художник-дизайнер; Бумага | 6.8h |  | 79.4 | 61 |  |
| 49 | 11.21 | Совещание 21 | 1h | 2021-07-21 09:00 | 2021-07-21 10:00 |  |  | 2021-07-21 09:00 | 2021-07-21 10:00 | 1h | 7.33d | start no earlier than 2021-07-21 09:00 | 3D-аниматор [80%]; Web-дизайнер; Ведущий программист; Мультимедиа-корреспондент; Системный аналитик; Технический писатель; Художник-дизайнер; Бумага | 6.8h |  | 79.4 |  |  |
| 50 | 11.22 | Совещание 22 | 1h | 2021-07-28 09:00 | 2021-07-28 10:00 |  |  |  |  |  | 2.33d | start no earlier than 2021-07-28 09:00 | 3D-аниматор [80%]; Web-дизайнер; Ведущий программист; Мультимедиа-корреспондент; Системный аналитик; Технический писатель; Художник-дизайнер; Бумага | 6.8h |  | 79.4 |  |  |
