# лр1

Schedule from MS Project, 2021-03-01 to 2021-08-02, status date 2021-04-09, costs in ₽, A marks actual dates.
Продолжительность - 6 месяцев / Количество работников - 16 человек / Бюджет - 50 000 рублей

## Calendars

- Стандартный: Mon-Fri 09:00-13:00, 14:00-18:00; Sat-Sun off. Exceptions (off unless hours are given): 2021-03-08 (Международный женский день), 2021-05-03 (Праздник весны и труда), 2021-05-10 (День победы), 2021-06-14 (День России).

## Resources

| Resource | Group | Rate | Cost per use |
| --- | --- | --- | --- |
| Ведущий программист | Программирование | 10 | 100 |
| Программист №1 | Программирование | 7 | 50 |
| Программист №2 | Программирование | 7 | 50 |
| Программист №3 | Программирование | 7 | 50 |
| Программист №4 | Программирование | 7 | 50 |
| Системный аналитик | Анализ | 20 | 300 |
| Художник-дизайнер | Дизайн | 8 | 70 |
| Технический писатель | Документация | 5 | 20 |
| Web-дизайнер | Internet | 7 | 50 |
| 3D-аниматор | Дизайн | 8.8 | 70 |
| Мультимедиа-корреспондент | M-медиа | 3 | 20 |
| Наборщик данных №1 | Ввод данных | 2 | 10 |
| Наборщик данных №2 | Ввод данных | 2 | 10 |
| Наборщик данных №3 | Ввод данных | 2 | 10 |
| Наборщик данных №4 | Ввод данных | 2 | 10 |
| Наборщик данных №5 | Ввод данных | 2 | 10 |
| Сервер | Сервер | 2 |  |
| Бумага |  | 20 |  |
| 3D-аниматор, стажер | Дизайн | 4 | 35 |
| Программист №5 | Программирование | 7 | 50 |

## Schedule

| ID | WBS | Task | Type | Duration | Start | Finish | Predecessors | Complete | Remaining | Baseline start | Baseline finish | Baseline duration | Total slack | Free slack | Resources | Work | Actual work | Cost | Baseline cost | Actual cost |
| --- | --- | --- | --- | --- | --- | --- | --- | --- | --- | --- | --- | --- | --- | --- | --- | --- | --- | --- | --- | --- |
| 1 | 1 | Начало проекта | milestone | 0w | 2021-03-01 09:00 A | 2021-03-01 09:00 A |  | 100% |  | 2021-03-01 09:00 | 2021-03-01 09:00 | 0w |  |  |  |  |  |  |  |  |
| 2 | 2 | **Анализ и разработка** |  | 83.84d | 2021-03-01 09:00 A | 2021-06-30 16:42 |  | 36% | 53.25d |  |  |  | 0.25d |  |  | 1237h | 520h | 11,482.73 |  | 8,189 |
| 3 | 2.1 | Разработка 2D графических элементов |  | 3w | 2021-03-01 09:00 A | 2021-03-23 12:00 A |  | 100% |  | 2021-03-01 09:00 | 2021-03-23 12:00 | 3w |  |  | Художник-дизайнер | 120h | 120h | 1,280 | 1,030 | 1,280 |
| 4 | 2.2 | Разработка 3D графических элементов |  | 1w | 2021-03-01 09:00 A | 2021-03-09 10:00 A | 3SS | 100% |  | 2021-03-01 09:00 | 2021-03-16 11:00 | 2w |  |  | 3D-аниматор; 3D-аниматор, стажер | 80h | 80h | 835 | 710 | 835 |
| 5 | 2.3 | Анализ и построение структуры базы объектов |  | 13.31w | 2021-03-24 09:00 A | 2021-04-16 18:00 |  | 8% | 12.22w | 2021-03-23 12:00 | 2021-04-15 14:20 | 3.33w | 0d |  | Системный аналитик; Сервер | 609h | 60h | 3,294.9 | 1,900 | 1,524 |
| 6 | 2.4 | Анализ и проектирование ядра |  | 3.25w | 2021-03-01 09:00 A | 2021-03-24 16:00 A |  | 100% |  | 2021-03-01 09:00 | 2021-03-23 12:00 | 3w |  |  | Ведущий программист; Системный аналитик | 260h | 260h | 4,550 | 4,000 | 4,550 |
| 7 | 2.5 | Разработка дизайна руководства |  | 1w | 2021-06-18 10:25 | 2021-06-25 11:25 | 12FS-10d |  |  | 2021-06-09 16:03 | 2021-06-17 17:03 | 1w | 0.25d | 0d | Художник-дизайнер | 40h |  | 390 | 390 |  |
| 8 | 2.6 | Разработка структуры сайта |  | 1d | 2021-06-22 10:25 | 2021-06-23 11:25 | 19SS |  |  | 2021-06-11 16:03 | 2021-06-15 16:03 | 1d | 0.25d | 0d | Web-дизайнер | 8h |  | 106 | 106 |  |
| 9 | 2.7 | Разработка дизайна сайта |  | 1.11w | 2021-06-23 11:25 | 2021-06-30 16:42 | 8 |  |  | 2021-06-15 16:03 | 2021-06-25 09:03 | 1.4w | 0.25d | 0d | 3D-аниматор; Web-дизайнер; Художник-дизайнер; 3D-аниматор, стажер | 120h |  | 1,026.83 | 1,110 |  |
| 10 | 3 | **Программирование и создание** |  | 97.68d | 2021-03-09 10:00 A | 2021-07-27 16:25 |  | 6% | 91.92d |  |  |  | 3.86d |  |  | 2792.99h | 119.99h | 20,322.39 |  | 1,066.34 |
| 11 | 3.1 | Создание заставки |  | 1.72w | 2021-03-09 10:00 A | 2021-04-05 09:33 A | 4 | 100% |  | 2021-03-16 11:00 | 2021-04-06 15:00 | 3w |  |  | 3D-аниматор; 3D-аниматор, стажер | 119.99h | 119.99h | 1,066.34 | 1,030 | 1,066.34 |
| 12 | 3.2 | Программирование интерфейса |  | 1.5w | 2021-06-22 15:25 | 2021-07-02 10:25 | 11, 15 |  |  | 2021-06-15 11:03 | 2021-06-24 16:03 | 1.5w | 0.25d | 0d | Программист №3; Программист №4; Программист №2; Программист №5 | 240h |  | 2,130 | 1,880 |  |
| 13 | 3.3 | Программирование средств обработки базы объектов |  | 7.76w | 2021-04-16 18:00 | 2021-05-05 15:20 | 5 |  |  | 2021-04-15 14:20 | 2021-04-29 14:20 | 2w | 0d |  | Программист №3; Программист №4; Программист №2; Программист №5; Сервер | 513h |  | 2,753.3 | 1,830 |  |
| 14 | 3.4 | Создание модели ядра |  | 2.52w | 2021-03-24 16:00 | 2021-04-12 11:36 | 6 |  |  | 2021-03-23 12:00 | 2021-04-06 12:49 | 2.02w | 4.67d |  | Ведущий программист; Программист №2; Программист №3; Программист №4 | 400h |  | 3,594.48 | 3,336.46 |  |
| 15 | 3.5 | Создание рабочей версии ядра |  | 7.71w | 2021-04-26 09:00 | 2021-06-22 15:25 | 23 |  |  | 2021-04-13 12:49 | 2021-06-15 11:03 | 8.36w | 0.25d | 0d | Ведущий программист; Программист №2; Программист №3; Программист №4; Программист №5 | 1200h |  | 9,618.27 | 9,391.52 |  |
| 16 | 3.6 | Создание мультимедиа – наполнения |  | 6w | 2021-04-05 09:33 | 2021-05-19 17:33 | 11 |  |  | 2021-04-06 15:00 | 2021-05-21 13:00 | 6w | 51.72d |  | Мультимедиа-корреспондент | 240h |  | 740 | 740 |  |
| 17 | 3.7 | Создание справочной системы |  | 2w | 2021-07-13 14:25 | 2021-07-27 16:25 | 12 |  |  | 2021-07-06 10:03 | 2021-07-20 12:03 | 2w | 3.86d |  | Технический писатель | 80h |  | 420 | 420 |  |
| 18 | 4 | **Наполнение** |  | 61d | 2021-05-05 15:20 | 2021-08-02 15:20 |  |  |  |  |  |  | 0d |  |  | 4776h |  | 11,245.6 |  |  |
| 19 | 4.1 | Написание руководства пользователя |  | 3w | 2021-06-22 10:25 | 2021-07-13 14:25 | 7SS+2d |  |  | 2021-06-11 16:03 | 2021-07-06 10:03 | 3w | 0.25d | 0d | Технический писатель | 120h |  | 620 | 620 |  |
| 20 | 4.2 | Наполнение базы объектов |  | 53.4w | 2021-05-05 15:20 | 2021-08-02 15:20 | 13 |  |  | 2021-04-29 14:20 | 2021-07-27 14:20 | 12w | 0d |  | Наборщик данных №1; Наборщик данных №2; Наборщик данных №3; Наборщик данных №4; Наборщик данных №5; Сервер | 4536h |  | 9,735.6 | 4,850 |  |
| 21 | 4.3 | Наполнение сайта |  | 3w | 2021-06-30 16:42 | 2021-07-22 10:42 | 9 |  |  | 2021-06-25 09:03 | 2021-07-16 12:03 | 3w | 0.25d | 0d | Web-дизайнер | 120h |  | 890 | 890 |  |
| 22 | 5 | **Тестирование** |  | 72.41d | 2021-04-19 09:00 A | 2021-08-02 12:18 |  |  | 72.41d |  |  |  | 0.25d |  |  | 520h |  | 4,523.26 |  | 50 |
| 23 | 5.1 | Тестирование модели ядра |  | 1w | 2021-04-19 09:00 A | 2021-04-23 18:00 | 14 |  | 1w | 2021-04-06 12:49 | 2021-04-13 12:49 | 1w | 0.25d | 0d | Программист №2 | 40h |  | 580 | 330 | 50 |
| 24 | 5.2 | Тестирование сайта |  | 2.44w | 2021-07-15 10:42 | 2021-08-02 12:18 | 21FS-1w |  |  | 2021-07-09 12:03 | 2021-07-27 14:28 | 2.44w | 0.25d | 0d | Ведущий программист; Программист №2; Программист №3; Программист №4; Программист №5 | 480h |  | 3,943.26 | 3,945.15 |  |
| 25 | 6 | Сдача сайта в эксплуатацию | milestone | 0w | 2021-08-02 12:18 | 2021-08-02 12:18 | 24 |  |  | 2021-07-27 14:28 | 2021-07-27 14:28 | 0w | 0.25d | 6.51d |  |  |  |  |  |  |

| ID | WBS | Task | Duration | Start | Finish | Complete | Remaining | Baseline start | Baseline finish | Baseline duration | Total slack | Constraint | Resources | Work | Actual work | Cost | Baseline cost | Actual cost |
| --- | --- | --- | --- | --- | --- | --- | --- | --- | --- | --- | --- | --- | --- | --- | --- | --- | --- | --- |
| 26 | 7 | **Совещание** | 101.12d | 2021-03-03 09:00 A | 2021-07-28 10:00 | 27% | 73.55d | 2021-03-03 09:00 | 2021-07-21 10:00 | 96.12d | 3.54d |  |  | 148.4h | 39.6h | 1,737.2 | 1,220 | 466.8 |
| 27 | 7.1 | Совещание 1 | 1h | 2021-03-03 09:00 A | 2021-03-03 10:00 A | 100% |  | 2021-03-03 09:00 | 2021-03-03 10:00 | 1h |  | start no earlier than 2021-03-03 09:00 | 3D-аниматор; Web-дизайнер; Ведущий программист; Мультимедиа-корреспондент; Системный аналитик; Технический писатель; Художник-дизайнер; Бумага | 7h | 7h | 81 | 61 | 81 |
| 28 | 7.2 | Совещание 2 | 1h | 2021-03-10 09:00 A | 2021-03-10 10:00 A | 100% |  | 2021-03-10 09:00 | 2021-03-10 10:00 | 1h |  | start no earlier than 2021-03-10 09:00 | 3D-аниматор; Web-дизайнер; Ведущий программист; Мультимедиа-корреспондент; Системный аналитик; Технический писатель; Художник-дизайнер; Бумага | 7h | 7h | 81 | 61 | 81 |
| 29 | 7.3 | Совещание 3 | 1h | 2021-03-17 09:00 A | 2021-03-17 10:00 A | 100% |  | 2021-03-17 09:00 | 2021-03-17 10:00 | 1h |  | start no earlier than 2021-03-17 09:00 | 3D-аниматор; Web-дизайнер; Ведущий программист; Мультимедиа-корреспондент; Системный аналитик; Технический писатель; Художник-дизайнер; Бумага | 6h | 6h | 73 | 61 | 73 |
| 30 | 7.4 | Совещание 4 | 1h | 2021-03-24 09:00 A | 2021-03-24 10:00 A | 100% |  | 2021-03-24 09:00 | 2021-03-24 10:00 | 1h |  | start no earlier than 2021-03-24 09:00 | 3D-аниматор; Web-дизайнер; Ведущий программист; Мультимедиа-корреспондент; Системный аналитик; Технический писатель; Художник-дизайнер; Бумага | 6h | 6h | 73 | 61 | 73 |
| 31 | 7.5 | Совещание 5 | 1h | 2021-03-31 09:00 A | 2021-03-31 10:00 A | 100% |  | 2021-03-31 09:00 | 2021-03-31 10:00 | 1h |  | start no earlier than 2021-03-31 09:00 | 3D-аниматор [80%]; Web-дизайнер; Ведущий программист; Мультимедиа-корреспондент; Системный аналитик; Технический писатель; Художник-дизайнер; Бумага | 6.8h | 6.8h | 79.4 | 61 | 79.4 |
| 32 | 7.6 | Совещание 6 | 1h | 2021-04-07 09:00 A | 2021-04-07 10:00 A | 100% |  | 2021-04-07 09:00 | 2021-04-07 10:00 | 1h |  | start no earlier than 2021-04-07 09:00 | 3D-аниматор [80%]; Web-дизайнер; Ведущий программист; Мультимедиа-корреспондент; Системный аналитик; Технический писатель; Художник-дизайнер; Бумага | 6.8h | 6.8h | 79.4 | 61 | 79.4 |
| 33 | 7.7 | Совещание 7 | 1h | 2021-04-14 09:00 | 2021-04-14 10:00 |  |  | 2021-04-14 09:00 | 2021-04-14 10:00 | 1h | 75.54d | start no earlier than 2021-04-14 09:00 | 3D-аниматор [80%]; Web-дизайнер; Ведущий программист; Мультимедиа-корреспондент; Системный аналитик; Технический писатель; Художник-дизайнер; Бумага | 6.8h |  | 79.4 | 61 |  |
| 34 | 7.8 | Совещание 8 | 1h | 2021-04-21 09:00 | 2021-04-21 10:00 |  |  | 2021-04-21 09:00 | 2021-04-21 10:00 | 1h | 70.54d | start no earlier than 2021-04-21 09:00 | 3D-аниматор [80%]; Web-дизайнер; Ведущий программист; Мультимедиа-корреспондент; Системный аналитик; Технический писатель; Художник-дизайнер; Бумага | 6.8h |  | 79.4 | 61 |  |
| 35 | 7.9 | Совещание 9 | 1h | 2021-04-28 09:00 | 2021-04-28 10:00 |  |  | 2021-04-28 09:00 | 2021-04-28 10:00 | 1h | 65.54d | start no earlier than 2021-04-28 09:00 | 3D-аниматор [80%]; Web-дизайнер; Ведущий программист; Мультимедиа-корреспондент; Системный аналитик; Технический писатель; Художник-дизайнер; Бумага | 6.8h |  | 79.4 | 61 |  |
| 36 | 7.10 | Совещание 10 | 1h | 2021-05-05 09:00 | 2021-05-05 10:00 |  |  | 2021-05-05 09:00 | 2021-05-05 10:00 | 1h | 61.54d | start no earlier than 2021-05-05 09:00 | 3D-аниматор [80%]; Web-дизайнер; Ведущий программист; Мультимедиа-корреспондент; Системный аналитик; Технический писатель; Художник-дизайнер; Бумага | 6.8h |  | 79.4 | 61 |  |
| 37 | 7.11 | Совещание 11 | 1h | 2021-05-12 09:00 | 2021-05-12 10:00 |  |  | 2021-05-12 09:00 | 2021-05-12 10:00 | 1h | 57.54d | start no earlier than 2021-05-12 09:00 | 3D-аниматор [80%]; Web-дизайнер; Ведущий программист; Мультимедиа-корреспондент; Системный аналитик; Технический писатель; Художник-дизайнер; Бумага | 6.8h |  | 79.4 | 61 |  |
| 38 | 7.12 | Совещание 12 | 1h | 2021-05-19 09:00 | 2021-05-19 10:00 |  |  | 2021-05-19 09:00 | 2021-05-19 10:00 | 1h | 52.54d | start no earlier than 2021-05-19 09:00 | 3D-аниматор [80%]; Web-дизайнер; Ведущий программист; Мультимедиа-корреспондент; Системный аналитик; Технический писатель; Художник-дизайнер; Бумага | 6.8h |  | 79.4 | 61 |  |
| 39 | 7.13 | Совещание 13 | 1h | 2021-05-26 09:00 | 2021-05-26 10:00 |  |  | 2021-05-26 09:00 | 2021-05-26 10:00 | 1h | 47.54d | start no earlier than 2021-05-26 09:00 | 3D-аниматор [80%]; Web-дизайнер; Ведущий программист; Мультимедиа-корреспондент; Системный аналитик; Технический писатель; Художник-дизайнер; Бумага | 6.8h |  | 79.4 | 61 |  |
| 40 | 7.14 | Совещание 14 | 1h | 2021-06-02 09:00 | 2021-06-02 10:00 |  |  | 2021-06-02 09:00 | 2021-06-02 10:00 | 1h | 42.54d | start no earlier than 2021-06-02 09:00 | 3D-аниматор [80%]; Web-дизайнер; Ведущий программист; Мультимедиа-корреспондент; Системный аналитик; Технический писатель; Художник-дизайнер; Бумага | 6.8h |  | 79.4 | 61 |  |
| 41 | 7.15 | Совещание 15 | 1h | 2021-06-09 09:00 | 2021-06-09 10:00 |  |  | 2021-06-09 09:00 | 2021-06-09 10:00 | 1h | 37.54d | start no earlier than 2021-06-09 09:00 | 3D-аниматор [80%]; Web-дизайнер; Ведущий программист; Мультимедиа-корреспондент; Системный аналитик; Технический писатель; Художник-дизайнер; Бумага | 6.8h |  | 79.4 | 61 |  |
| 42 | 7.16 | Совещание 16 | 1h | 2021-06-16 09:00 | 2021-06-16 10:00 |  |  | 2021-06-16 09:00 | 2021-06-16 10:00 | 1h | 33.54d | start no earlier than 2021-06-16 09:00 | 3D-аниматор [80%]; Web-дизайнер; Ведущий программист; Мультимедиа-корреспондент; Системный аналитик; Технический писатель; Художник-дизайнер; Бумага | 6.8h |  | 79.4 | 61 |  |
| 43 | 7.17 | Совещание 17 | 1h | 2021-06-23 09:00 | 2021-06-23 10:00 |  |  | 2021-06-23 09:00 | 2021-06-23 10:00 | 1h | 28.54d | start no earlier than 2021-06-23 09:00 | 3D-аниматор [80%]; Web-дизайнер; Ведущий программист; Мультимедиа-корреспондент; Системный аналитик; Технический писатель; Художник-дизайнер; Бумага | 6.8h |  | 79.4 | 61 |  |
| 44 | 7.18 | Совещание 18 | 1h | 2021-06-30 09:00 | 2021-06-30 10:00 |  |  | 2021-06-30 09:00 | 2021-06-30 10:00 | 1h | 23.54d | start no earlier than 2021-06-30 09:00 | 3D-аниматор [80%]; Web-дизайнер; Ведущий программист; Мультимедиа-корреспондент; Системный аналитик; Технический писатель; Художник-дизайнер; Бумага | 6.8h |  | 79.4 | 61 |  |
| 45 | 7.19 | Совещание 19 | 1h | 2021-07-07 09:00 | 2021-07-07 10:00 |  |  | 2021-07-07 09:00 | 2021-07-07 10:00 | 1h | 18.54d | start no earlier than 2021-07-07 09:00 | 3D-аниматор [80%]; Web-дизайнер; Ведущий программист; Мультимедиа-корреспондент; Системный аналитик; Технический писатель; Художник-дизайнер; Бумага | 6.8h |  | 79.4 | 61 |  |
| 46 | 7.20 | Совещание 20 | 1h | 2021-07-14 09:00 | 2021-07-14 10:00 |  |  | 2021-07-14 09:00 | 2021-07-14 10:00 | 1h | 13.54d | start no earlier than 2021-07-14 09:00 | 3D-аниматор [80%]; Web-дизайнер; Ведущий программист; Мультимедиа-корреспондент; Системный аналитик; Технический писатель; Художник-дизайнер; Бумага | 6.8h |  | 79.4 | 61 |  |
| 47 | 7.21 | Совещание 21 | 1h | 2021-07-21 09:00 | 2021-07-21 10:00 |  |  | 2021-07-21 09:00 | 2021-07-21 10:00 | 1h | 8.54d | start no earlier than 2021-07-21 09:00 | 3D-аниматор [80%]; Web-дизайнер; Ведущий программист; Мультимедиа-корреспондент; Системный аналитик; Технический писатель; Художник-дизайнер; Бумага | 6.8h |  | 79.4 |  |  |
| 48 | 7.22 | Совещание 22 | 1h | 2021-07-28 09:00 | 2021-07-28 10:00 |  |  |  |  |  | 3.54d | start no earlier than 2021-07-28 09:00 | 3D-аниматор [80%]; Web-дизайнер; Ведущий программист; Мультимедиа-корреспондент; Системный аналитик; Технический писатель; Художник-дизайнер; Бумага | 6.8h |  | 79.4 |  |  |
