# рк

Schedule from MS Project, 2021-04-05 to 2021-06-18, status date 2021-06-01, costs in ₽, A marks actual dates.

## Calendars

- Стандартный: Mon-Fri 09:00-13:00, 14:00-18:00; Sat-Sun off. Exceptions (off unless hours are given): 2021-05-03 (Перенос 1 мая), 2021-05-10 (Перенос 9 мая), 2021-06-14 (Перенос 12 июня).

## Resources

| Resource | Group | Rate | Cost per use | Notes |
| --- | --- | --- | --- | --- |
| Соколов | Программисты | 437.5 |  | Ведущий программист |
| Соломин | Программисты | 343.75 |  |  |
| Тимофеев | Программисты | 312.5 |  |  |
| Яковлева | Программисты | 312.5 |  |  |
| Петров | Дизайнеры | 468.75 |  | Руководитель дизайнерской группы |
| Кузнецов | Дизайнеры | 312.5 |  |  |
| Фомина | Редактор сайта | 250 |  |  |
| Преподаватели | Преподаватели | 700 |  |  |
| Программное обеспечение | ПО | 30000 | 5000 |  |
| Картриджи для принтера | Расходные материалы | 2500 |  |  |
| Бумага | Расходные материалы | 200 |  |  |
| Иванов | Программисты | 187.5 |  |  |

## Schedule

| ID | WBS | Task | Type | Duration | Start | Finish | Predecessors | Complete | Remaining | Baseline start | Baseline finish | Baseline duration | Total slack | Free slack | Resources | Work | Actual work | Cost | Baseline cost | Actual cost |
| --- | --- | --- | --- | --- | --- | --- | --- | --- | --- | --- | --- | --- | --- | --- | --- | --- | --- | --- | --- | --- |
| 1 | 1 | **РК** |  | 51.33d | 2021-04-05 A | 2021-06-18 |  | 60% | 20.39d | 2021-04-05 | 2021-06-16 | 49.81d | 0d |  | Бумага [1.9%] | 1584h | 1096h | 640,113.64 | 639,860.95 | 492,523.1 |
| 2 | 1.1 | Начало проекта | milestone | 0d | 2021-04-05 A | 2021-04-05 A |  | 100% |  | 2021-04-05 | 2021-04-05 | 0d |  |  |  |  |  |  |  |  |
| 3 | 1.2 | Установка ПО |  | 15d | 2021-04-06 A | 2021-04-26 A | 2FS+1d | 100% |  | 2021-04-06 | 2021-04-26 | 15d |  |  | Программное обеспечение; Соколов | 120h | 120h | 87,500 | 87,500 | 87,500 |
| 4 | 1.3 | Обучение персонала |  | 22.14d | 2021-04-20 A | 2021-05-24 A | 3SS+10d | 100% |  | 2021-04-20 | 2021-05-24 | 22.14d |  |  | Преподаватели [300%]; Соломин; Тимофеев; Бумага; Картриджи для принтера; Кузнецов; Петров; Яковлева; Соколов | 960h | 960h | 398,719 | 398,700 | 398,719 |
| 5 | 1.4 | **Разработка представительских сайтов** |  | 10.86d | 2021-05-24 A | 2021-06-07 | 4 | 38% | 6.76d | 2021-05-24 | 2021-06-03 | 8d | 7.33d | 0d |  | 80h | 16h | 26,000 | 26,000 | 5,310 |
| 6 | 1.4.1 | **Разработка сайта 1** |  | 7.86d | 2021-05-24 A | 2021-06-02 |  | 62% | 3d | 2021-05-24 | 2021-05-31 | 5d | 7.33d | 0d |  | 40h | 16h | 13,000 | 13,000 | 5,310 |
| 7 | 1.4.1.1 | Разработка дизайна сайта 1 |  | 4.86d | 2021-05-24 A | 2021-05-28 A |  | 100% |  | 2021-05-24 | 2021-05-26 | 2d |  |  | Кузнецов | 16h | 16h | 5,000 | 5,000 | 5,000 |
| 8 | 1.4.1.2 | Программирование сайта 1 |  | 3d | 2021-05-31 | 2021-06-02 | 7 |  |  | 2021-05-26 | 2021-05-31 | 3d | 7.33d |  | Тимофеев | 24h |  | 7,500 | 7,500 |  |
| 9 | 1.4.2 | **Разработка сайта 2** |  | 5d | 2021-06-01 | 2021-06-07 | 6FS-2d |  |  | 2021-05-27 | 2021-06-03 | 5d | 7.33d |  |  | 40h |  | 13,000 | 13,000 |  |
| 10 | 1.4.2.1 | Разработка дизайна сайта 2 |  | 2d | 2021-06-01 | 2021-06-02 |  |  |  | 2021-05-27 | 2021-05-31 | 2d | 7.33d | 0d | Кузнецов | 16h |  | 5,000 | 5,000 |  |
| 11 | 1.4.2.2 | Программирование сайта 2 |  | 3d | 2021-06-03 | 2021-06-07 | 10 |  |  | 2021-05-31 | 2021-06-03 | 3d | 7.33d |  | Тимофеев | 24h |  | 7,500 | 7,500 |  |
| 12 | 1.5 | Представительские сайты созданы | milestone | 0d | 2021-06-07 | 2021-06-07 | 5 |  |  | 2021-06-03 | 2021-06-03 | 0d | 7.33d |  |  |  |  |  |  |  |
| 13 | 1.6 | **Разработка корпоративного сайта** |  | 18.19d | 2021-05-24 A | 2021-06-18 | 4 |  | 18.19d | 2021-05-24 | 2021-06-16 | 16.67d | 0d |  |  | 424h |  | 126,166.67 | 126,166.67 |  |
| 14 | 1.6.1 | Проектирование сайта |  | 3.33d | 2021-05-24 | 2021-05-27 |  |  |  | 2021-05-24 | 2021-05-27 | 3.33d | 1.52d |  | Соколов; Петров; Иванов | 80h |  | 29,166.67 | 29,166.67 |  |
| 15 | 1.6.2 | Программирование сайта |  | 10d | 2021-05-31 A | 2021-06-11 | 14 |  | 10d | 2021-05-27 | 2021-06-10 | 10d | 0d |  | Соломин; Яковлева; Иванов | 240h |  | 68,500 | 68,500 |  |
| 16 | 1.6.3 | Наполнение сайта |  | 3d | 2021-06-09 | 2021-06-11 | 15FS-3d |  |  | 2021-06-07 | 2021-06-10 | 3d | 0d |  | Фомина | 24h |  | 6,000 | 6,000 |  |
| 17 | 1.6.4 | Тестирование сайта |  | 3.33d | 2021-06-15 | 2021-06-18 | 16 |  |  | 2021-06-10 | 2021-06-16 | 3.33d | 0d |  | Соломин; Яковлева; Иванов | 80h |  | 22,500 | 22,500 |  |
| 18 | 1.7 | Сдача сайта закзчику | milestone | 0d | 2021-06-18 | 2021-06-18 | 17 |  |  | 2021-06-16 | 2021-06-16 | 0d | 0d |  |  |  |  |  |  |  |
