# рк

Schedule from MS Project, 2021-04-05 to 2021-06-16, costs in ₽.

## Calendars

- Стандартный: Mon-Fri 09:00-13:00, 14:00-18:00; Sat-Sun off. Exceptions (off unless hours are given): 2021-05-03 (Перенос 1 мая), 2021-05-10 (Перенос 9 мая), 2021-06-14 (Перенос 12 июня).

## Resources

| Resource | Group | Rate | Cost per use | Notes |
| --- | --- | --- | --- | --- |
| Соколов | Программисты | 437.5 |  | Ведущий программист |
| Соломин | Программисты | 343.75 |  |  |
| Тимофеев | Программисты | 312.5 |  |  |
| Яковлева | Программисты | 312.5 |  |  |
| Петров | Дизайнеры | 468.75 |  | Руководитель дизайнерской группы |
| Кузнецов | Дизайнеры | 312.5 |  |  |
| Фомина | Редактор сайта | 250 |  |  |
| Преподаватели | Преподаватели | 700 |  |  |
| Программное обеспечение | ПО | 30000 | 5000 |  |
| Картриджи для принтера | Расходные материалы | 2500 |  |  |
| Бумага | Расходные материалы | 200 |  |  |
| Иванов | Программисты | 187.5 |  |  |

## Schedule

| ID | WBS | Task | Type | Duration | Start | Finish | Predecessors | Baseline start | Baseline finish | Baseline duration | Total slack | Free slack | Resources | Work | Cost | Baseline cost |
| --- | --- | --- | --- | --- | --- | --- | --- | --- | --- | --- | --- | --- | --- | --- | --- | --- |
| 1 | 1 | **РК** |  | 49.81d | 2021-04-05 | 2021-06-16 |  | 2021-04-05 | 2021-06-16 | 49.81d | 0d |  | Бумага [1.9%] | 1584h | 639,860.95 | 639,860.95 |
| 2 | 1.1 | Начало проекта | milestone | 0d | 2021-04-05 | 2021-04-05 |  | 2021-04-05 | 2021-04-05 | 0d | 0d |  |  |  |  |  |
| 3 | 1.2 | Установка ПО |  | 15d | 2021-04-06 | 2021-04-26 | 2FS+1d | 2021-04-06 | 2021-04-26 | 15d | 0d |  | Программное обеспечение; Соколов | 120h | 87,500 | 87,500 |
| 4 | 1.3 | Обучение персонала |  | 22.14d | 2021-04-20 | 2021-05-24 | 3SS+10d | 2021-04-20 | 2021-05-24 | 22.14d | 0d |  | Преподаватели [300%]; Соломин; Тимофеев; Бумага; Картриджи для принтера; Кузнецов; Петров; Яковлева; Соколов | 960h | 398,700 | 398,700 |
| 5 | 1.4 | **Разработка представительских сайтов** |  | 8d | 2021-05-24 | 2021-06-03 | 4 | 2021-05-24 | 2021-06-03 | 8d | 8.67d | 0d |  | 80h | 26,000 | 26,000 |
| 6 | 1.4.1 | **Разработка сайта 1** |  | 5d | 2021-05-24 | 2021-05-31 |  | 2021-05-24 | 2021-05-31 | 5d | 8.67d | 0d |  | 40h | 13,000 | 13,000 |
| 7 | 1.4.1.1 | Разработка дизайна сайта 1 |  | 2d | 2021-05-24 | 2021-05-26 |  | 2021-05-24 | 2021-05-26 | 2d | 8.67d | 0d | Кузнецов | 16h | 5,000 | 5,000 |
| 8 | 1.4.1.2 | Программирование сайта 1 |  | 3d | 2021-05-26 | 2021-05-31 | 7 | 2021-05-26 | 2021-05-31 | 3d | 8.67d |  | Тимофеев | 24h | 7,500 | 7,500 |
| 9 | 1.4.2 | **Разработка сайта 2** |  | 5d | 2021-05-27 | 2021-06-03 | 6FS-2d | 2021-05-27 | 2021-06-03 | 5d | 8.67d |  |  | 40h | 13,000 | 13,000 |
| 10 | 1.4.2.1 | Разработка дизайна сайта 2 |  | 2d | 2021-05-27 | 2021-05-31 |  | 2021-05-27 | 2021-05-31 | 2d | 8.67d | 0d | Кузнецов | 16h | 5,000 | 5,000 |
| 11 | 1.4.2.2 | Программирование сайта 2 |  | 3d | 2021-05-31 | 2021-06-03 | 10 | 2021-05-31 | 2021-06-03 | 3d | 8.67d |  | Тимофеев | 24h | 7,500 | 7,500 |
| 12 | 1.5 | Представительские сайты созданы | milestone | 0d | 2021-06-03 | 2021-06-03 | 5 | 2021-06-03 | 2021-06-03 | 0d | 8.67d |  |  |  |  |  |
| 13 | 1.6 | **Разработка корпоративного сайта** |  | 16.67d | 2021-05-24 | 2021-06-16 | 4 | 2021-05-24 | 2021-06-16 | 16.67d | 0d |  |  | 424h | 126,166.67 | 126,166.67 |
| 14 | 1.6.1 | Проектирование сайта |  | 3.33d | 2021-05-24 | 2021-05-27 |  | 2021-05-24 | 2021-05-27 | 3.33d | 0d |  | Соколов; Петров; Иванов | 80h | 29,166.67 | 29,166.67 |
| 15 | 1.6.2 | Программирование сайта |  | 10d | 2021-05-27 | 2021-06-10 | 14 | 2021-05-27 | 2021-06-10 | 10d | 0d |  | Соломин; Яковлева; Иванов | 240h | 68,500 | 68,500 |
| 16 | 1.6.3 | Наполнение сайта |  | 3d | 2021-06-07 | 2021-06-10 | 15FS-3d | 2021-06-07 | 2021-06-10 | 3d | 0d |  | Фомина | 24h | 6,000 | 6,000 |
| 17 | 1.6.4 | Тестирование сайта |  | 3.33d | 2021-06-10 | 2021-06-16 | 16 | 2021-06-10 | 2021-06-16 | 3.33d | 0d |  | Соломин; Яковлева; Иванов | 80h | 22,500 | 22,500 |
| 18 | 1.7 | Сдача сайта закзчику | milestone | 0d | 2021-06-16 | 2021-06-16 | 17 | 2021-06-16 | 2021-06-16 | 0d | 0d |  |  |  |  |  |
